# Plan de Trabajo

Schedule from MS Project, 2022-03-17 to 2022-06-28, A marks actual dates.

## Calendars

- Estándar: Mon-Fri 09:00-13:00, 15:00-19:00; Sat-Sun off.

## Resources

| Resource |
| --- |
| Equipo de desarrollo |
| Johan Carrillo |
| Mario Sinay |
| Jhensser Aguirre |
| Jorge Muñoz |
| Sara Ocalle |
| Sara Ovalle |
| E4 |

## Schedule

| ID | WBS | Task | Duration | Start | Finish | Predecessors | Complete | Remaining | Total slack | Free slack | Resources | Work | Actual work |
| --- | --- | --- | --- | --- | --- | --- | --- | --- | --- | --- | --- | --- | --- |
| 1 | 1 | **Proyecto de Sistema para Clinica Médica** | 74d | 2022-03-17 A | 2022-06-28 |  | 32% | 50.35d | 0d |  |  | 1168h | 365.6h |
| 2 | 1.1 | **Inicio** | 11d | 2022-03-17 A | 2022-03-31 A |  | 100% |  |  |  |  | 120h | 120h |
| 3 | 1.1.1 | Estudio de información de las instituciones médicas centralizadas en la historia clínica | 2d | 2022-03-17 A | 2022-03-18 A |  | 100% |  |  |  | Equipo de desarrollo | 16h | 16h |
| 4 | 1.1.2 | Estudio de la estructura organizacional de una clínica médica | 2d | 2022-03-17 A | 2022-03-18 A |  | 100% |  |  |  | Equipo de desarrollo | 16h | 16h |
| 5 | 1.1.3 | Estudio de factibilidad económico | 2d | 2022-03-17 A | 2022-03-18 A |  | 100% |  |  |  | Equipo de desarrollo | 16h | 16h |
| 6 | 1.1.4 | Acta de Constitución | 4d | 2022-03-21 A | 2022-03-24 A | 5 | 100% |  |  |  | Johan Carrillo | 32h | 32h |
| 7 | 1.1.5 | Realizar Dercas | 4d | 2022-03-25 A | 2022-03-30 A | 6 | 100% |  |  |  | Equipo de desarrollo | 32h | 32h |
| 8 | 1.1.6 | Reunión Inicial de Proyecto (Kick Off) | 1d | 2022-03-31 A | 2022-03-31 A | 7 | 100% |  |  |  | Equipo de desarrollo | 8h | 8h |
| 9 | 1.2 | **Planificación** | 14d | 2022-03-17 A | 2022-04-05 |  | 86% | 1.89d | 60d |  |  | 136h | 117.6h |
| 10 | 1.2.1 | **Toma de Requerimientos** | 14d | 2022-03-17 A | 2022-04-05 |  | 86% | 1.89d | 60d |  |  | 136h | 117.6h |
| 11 | 1.2.1.1 | Tomar Requerimiento Funcionales | 2d | 2022-04-01 A | 2022-04-04 A | 8 | 100% |  |  |  | Equipo de desarrollo | 16h | 16h |
| 12 | 1.2.1.2 | Tomar Requerimientos no Funcionales | 2d | 2022-03-17 A | 2022-03-18 A |  | 100% |  |  |  | Equipo de desarrollo | 16h | 16h |
| 13 | 1.2.1.3 | Definir Lenguaje de Programación | 1d | 2022-03-21 A | 2022-03-21 A | 12 | 100% |  |  |  | Equipo de desarrollo | 8h | 8h |
| 14 | 1.2.1.4 | Definir IDE a utilizar | 1d | 2022-03-17 A | 2022-03-17 A |  | 100% |  |  |  | Equipo de desarrollo | 8h | 8h |
| 15 | 1.2.1.5 | Definir Base de Datos | 1d | 2022-03-22 A | 2022-03-22 A | 13 | 100% |  |  |  | Johan Carrillo | 8h | 8h |
| 16 | 1.2.1.6 | Realizar Diagrama de Entidad Relación | 2d | 2022-03-23 A | 2022-03-24 A | 15 | 100% |  |  |  | Johan Carrillo | 16h | 16h |
| 17 | 1.2.1.7 | **Desarrollo de Diagramas UML** | 8d | 2022-03-25 A | 2022-04-05 |  | 71% | 2.3d | 60d |  |  | 64h | 45.6h |
| 18 | 1.2.1.7.1 | Diagrama de Casos de uso | 1d | 2022-03-25 A | 2022-03-25 A | 16 | 100% |  |  |  | Mario Sinay | 8h | 8h |
| 19 | 1.2.1.7.2 | Diagrama de Clases | 3d | 2022-03-28 A | 2022-03-30 | 18 | 50% | 1.5d | 1.6d | 0d | Jhensser Aguirre | 24h | 12h |
| 20 | 1.2.1.7.3 | Diagrama de Secuencias | 2d | 2022-03-31 A | 2022-04-01 | 19 | 80% | 0.4d | 1.6d | 0d | Jorge Muñoz | 16h | 12.8h |
| 21 | 1.2.1.7.4 | Diagrama de Actividades | 2d | 2022-04-04 A | 2022-04-05 | 20 | 80% | 0.4d | 60d |  | Sara Ovalle | 16h | 12.8h |
| 22 | 1.3 | **Ejecución** | 44d | 2022-04-06 A | 2022-06-06 |  | 21% | 34.97d | 16d |  |  | 472h | 128h |
| 23 | 1.3.1 | Realizar Mockups | 4d | 2022-04-06 A | 2022-04-11 A | 21 | 100% |  |  |  | Equipo de desarrollo | 32h | 32h |
| 24 | 1.3.2 | Implementacion del ambiente para desarrollo | 1d | 2022-04-12 A | 2022-04-12 A | 23 | 100% |  |  |  | Equipo de desarrollo | 8h | 8h |
| 25 | 1.3.3 | Realizar la Base de Datos | 5d | 2022-04-13 A | 2022-04-19 A | 24 | 100% |  |  |  | Johan Carrillo | 40h | 40h |

| ID | WBS | Task | Duration | Start | Finish | Predecessors | Complete | Remaining | Total slack | Resources | Work | Actual work |
| --- | --- | --- | --- | --- | --- | --- | --- | --- | --- | --- | --- | --- |
| 26 | 1.3.4 | **Desarrollar Backend** | 22d | 2022-04-20 A | 2022-05-19 | 25 | 26% | 16.26d | 28d |  | 184h | 48h |
| 27 | 1.3.4.1 | Creacion de conexión a la base de datos | 3d | 2022-04-20 A | 2022-04-22 A | 25 | 100% |  |  | Equipo de desarrollo | 24h | 24h |
| 28 | 1.3.4.2 | Configuracion de la base de datos | 3d | 2022-04-25 A | 2022-04-27 A | 27 | 100% |  |  | Equipo de desarrollo | 24h | 24h |
| 29 | 1.3.4.3 | Implemenacion de plugin y o librerias | 1d | 2022-04-20 | 2022-04-20 |  |  |  | 49d | Equipo de desarrollo | 8h |  |
| 30 | 1.3.4.4 | Crear servicios | 15d | 2022-04-28 | 2022-05-18 | 28 |  |  | 0d | Equipo de desarrollo | 120h |  |
| 31 | 1.3.4.5 | Crear las conexiones con el frontend | 1d | 2022-05-19 | 2022-05-19 | 30 |  |  | 28d | Equipo de desarrollo | 8h |  |
| 32 | 1.3.5 | **Desarrollar Frontend** | 31d | 2022-04-20 | 2022-06-01 | 25 |  |  | 0d |  | 152h |  |
| 33 | 1.3.5.1 | **Creacion de la vistas** | 5d | 2022-04-20 | 2022-04-26 |  |  |  | 21d | Equipo de desarrollo | 40h |  |
| 34 | 1.3.5.1.1 | Login | 3d | 2022-04-20 | 2022-04-22 |  |  |  | 23d |  |  |  |
| 35 | 1.3.5.1.2 | Inicio | 3d | 2022-04-20 | 2022-04-22 |  |  |  | 23d |  |  |  |
| 36 | 1.3.5.1.3 | Usuarios | 3d | 2022-04-20 | 2022-04-22 |  |  |  | 23d |  |  |  |
| 37 | 1.3.5.1.4 | Citas | 5d | 2022-04-20 | 2022-04-26 |  |  |  | 21d |  |  |  |
| 38 | 1.3.5.1.5 | Pacientes | 3d | 2022-04-20 | 2022-04-22 |  |  |  | 23d |  |  |  |
| 39 | 1.3.5.1.6 | Empleados | 3d | 2022-04-20 | 2022-04-22 |  |  |  | 23d |  |  |  |
| 40 | 1.3.5.1.7 | Inventario y Tienda | 5d | 2022-04-20 | 2022-04-26 |  |  |  | 21d |  |  |  |
| 41 | 1.3.5.1.8 | Ramas médicas | 1d | 2022-04-20 | 2022-04-20 |  |  |  | 25d |  |  |  |
| 42 | 1.3.5.2 | Implementacion de los servicios | 5d | 2022-05-19 | 2022-05-25 | 30 |  |  | 0d | Equipo de desarrollo | 40h |  |
| 43 | 1.3.5.3 | Consumir los servicios del backend | 5d | 2022-05-26 | 2022-06-01 | 42, 33 |  |  | 0d | Equipo de desarrollo | 40h |  |
| 44 | 1.3.5.4 | Implementacion de un framework | 1d | 2022-04-20 | 2022-04-20 |  |  |  | 30d | Equipo de desarrollo | 8h |  |
| 45 | 1.3.5.5 | Consumir un framework | 3d | 2022-04-20 | 2022-04-22 |  |  |  | 28d | Equipo de desarrollo | 24h |  |
| 46 | 1.3.6 | **Realizar Pruebas de Software** | 3d | 2022-06-02 | 2022-06-06 |  |  |  | 0d |  | 56h |  |
| 47 | 1.3.6.1 | **Pruebas Funcionales** | 1d | 2022-06-02 | 2022-06-02 |  |  |  | 18d |  | 32h |  |
| 48 | 1.3.6.1.1 | Pruebas Unitarias | 1d | 2022-06-02 | 2022-06-02 | 32 |  |  | 18d | Jhensser Aguirre | 8h |  |
| 49 | 1.3.6.1.2 | Pruebas de Integración | 1d | 2022-06-02 | 2022-06-02 | 32 |  |  | 18d | Mario Sinay; Johan Carrillo; Sara Ovalle | 24h |  |

| ID | WBS | Task | Duration | Start | Finish | Predecessors | Total slack | Resources | Work |
| --- | --- | --- | --- | --- | --- | --- | --- | --- | --- |
| 50 | 1.3.6.2 | **Pruebas No Funcionales** | 3d | 2022-06-02 | 2022-06-06 |  | 0d |  | 24h |
| 51 | 1.3.6.2.1 | Performance Tesitng | 3d | 2022-06-02 | 2022-06-06 | 32 | 0d | Jorge Muñoz | 24h |
| 52 | 1.4 | **Monitoreo y Control** | 16d | 2022-06-07 | 2022-06-28 |  | 0d |  | 344h |
| 53 | 1.4.1 | **Desviaciones del Sistema** | 16d | 2022-06-07 | 2022-06-28 |  | 0d |  | 304h |
| 54 | 1.4.1.1 | Verificar Desviaciones del Sistema | 4d | 2022-06-07 | 2022-06-10 | 51 | 0d | Jhensser Aguirre | 32h |
| 55 | 1.4.1.2 | Documentar las Desviaciones del sistema | 2d | 2022-06-13 | 2022-06-14 | 54 | 0d | Jhensser Aguirre; Johan Carrillo | 32h |
| 56 | 1.4.1.3 | Corrección de las Desviaciones Encontradas | 10d | 2022-06-15 | 2022-06-28 | 55 | 0d | Jhensser Aguirre; Johan Carrillo; Mario Sinay | 240h |
| 57 | 1.4.2 | Verificación de estabilidad del sistema | 3d | 2022-06-13 | 2022-06-15 | 54 | 9d | Sara Ovalle | 24h |
| 58 | 1.4.3 | Test de la velocidad de respuesta del sistema | 1d | 2022-06-13 | 2022-06-13 | 54 | 0d | Jorge Muñoz | 8h |
| 59 | 1.4.4 | Correcciones en el plan de trabajo | 1d | 2022-06-14 | 2022-06-14 | 58 | 0d | Equipo de desarrollo | 8h |
| 60 | 1.5 | **Cierre** | 10d | 2022-06-15 | 2022-06-28 |  | 0d |  | 96h |
| 61 | 1.5.1 | Finalizar formalmente el proyecto | 5d | 2022-06-15 | 2022-06-21 | 59 | 0d | Equipo de desarrollo | 40h |
| 62 | 1.5.2 | Lecciones Aprendidas | 2d | 2022-06-22 | 2022-06-23 | 61 | 3d | Equipo de desarrollo | 16h |
| 63 | 1.5.3 | Acta de Cierre | 5d | 2022-06-22 | 2022-06-28 | 61 | 0d | Equipo de desarrollo | 40h |
